# MLo_Metabolic_v1_final

Schedule from MS Project, 2023-09-18 to 2024-06-12.

## Calendars

- Estándar: Mon-Fri 09:00-13:00, 15:00-19:00; Sat-Sun off.

## Schedule

| ID | WBS | Task | Type | Duration | Start | Finish | Predecessors | Total slack | Free slack | Constraint | Text1 |
| --- | --- | --- | --- | --- | --- | --- | --- | --- | --- | --- | --- |
| 1 | 1 | **Proyecto MetaboliCare** |  | 193d | 2023-09-18 | 2024-06-12 |  | 0d |  |  |  |
| 2 | 1.1 | Contract signing | milestone | 0d | 2023-09-18 | 2023-09-18 |  | 0d |  | start no earlier than 2023-09-18 |  |
| 3 | 1.2 | Project planning |  | 30d | 2023-09-18 | 2023-10-27 | 2 | 0d |  |  |  |
| 4 | 1.3 | Project execution and controlling |  | 150d | 2023-10-30 | 2024-05-24 | 3 | 9d |  |  |  |
| 5 | 1.4 | Conceptual design |  | 5d | 2023-10-30 | 2023-11-03 | 3 | 0d |  |  |  |
| 6 | 1.5 | Functional requirements definition |  | 5d | 2023-11-06 | 2023-11-10 | 5 | 0d |  |  |  |
| 7 | 1.6 | Zone 1 design |  | 8d | 2023-11-13 | 2023-11-22 | 6 | 0d |  |  |  |
| 8 | 1.7 | Zone 2 design |  | 8d | 2023-11-13 | 2023-11-22 | 6 | 0d |  |  |  |
| 9 | 1.8 | Zone 3 design |  | 8d | 2023-11-13 | 2023-11-22 | 6 | 0d |  |  |  |
| 10 | 1.9 | Construction tramits |  | 30d | 2023-11-23 | 2024-01-03 | 7, 8, 9 | 0d |  |  | 6;7;8 |
| 11 | 1.10 | Operations licenses |  | 25d | 2023-11-23 | 2023-12-27 | 7, 8, 9 | 114d |  |  | 6;7;8 |
| 12 | 1.11 | Insurance contract |  | 9d | 2023-11-23 | 2023-12-05 | 7, 8, 9 | 130d |  |  | 6;7;8 |
| 13 | 1.12 | Bidding |  | 15d | 2023-11-23 | 2023-12-13 | 7, 8, 9 | 15d |  |  | 6;7;8 |
| 14 | 1.13 | Pipeline system zone 1 |  | 7d | 2024-01-04 | 2024-01-12 | 7, 10, 13 | 45d | 0d |  | 6;9;13 |
| 15 | 1.14 | Electrical system zone 1 |  | 10d | 2024-01-15 | 2024-01-26 | 13, 14 | 45d | 0d |  | 13 |
| 16 | 1.15 | Air Condition System zone 1 |  | 5d | 2024-01-29 | 2024-02-02 | 13, 15 | 48d | 0d |  | 13 |
| 17 | 1.16 | Floor adaptation zone 1 |  | 3d | 2024-02-05 | 2024-02-07 | 15, 16 | 48d | 0d |  | 15 |
| 18 | 1.17 | Installation of mirrors |  | 2d | 2024-02-08 | 2024-02-09 | 15, 17 | 48d | 0d |  | 15 |
| 19 | 1.18 | Replacement of toilets zone 1 |  | 5d | 2024-02-12 | 2024-02-16 | 15, 18 | 48d | 3d |  | 15 |
| 20 | 1.19 | Installation of stair |  | 7d | 2024-01-29 | 2024-02-06 | 15 | 45d | 0d |  | 15 |
| 21 | 1.20 | Elevator replacement |  | 7d | 2024-02-07 | 2024-02-15 | 15, 20 | 45d | 0d |  | 15;20 |
| 22 | 1.21 | Installation of turnstiles for employee entry |  | 2d | 2024-02-16 | 2024-02-19 | 21 | 45d | 0d |  | 21 |
| 23 | 1.22 | Installation of fiber optics for WiFi zone 1 |  | 1d | 2024-02-20 | 2024-02-20 | 22, 14 | 45d | 0d |  | 22 |
| 24 | 1.23 | Installation of water dispensers |  | 1d | 2024-02-21 | 2024-02-21 | 23 | 45d | 0d |  | 23 |
| 25 | 1.24 | Wall patching on floor 1 |  | 8d | 2024-02-22 | 2024-03-04 | 24, 19 | 45d | 0d |  | 24 |
| 26 | 1.25 | Painting walls on floor 1 |  | 5d | 2024-03-12 | 2024-03-18 | 25FS+5d | 45d | 0d |  | 25FC+5 días |
| 27 | 1.26 | Adaptation and installation of machinary |  | 6d | 2024-03-19 | 2024-03-26 | 26 | 45d | 0d |  | 26 |
| 28 | 1.27 | Furniture installation |  | 2d | 2024-03-27 | 2024-03-28 | 26, 27 | 45d |  |  | 26 |
| 29 | 1.28 | Pipeline system zone 2 |  | 6d | 2024-01-04 | 2024-01-11 | 8, 10, 13 | 0d |  |  | 7;9;13 |
| 30 | 1.29 | Electrical system zone 2 |  | 9d | 2024-01-12 | 2024-01-24 | 13, 29 | 0d |  |  | 13 |
| 31 | 1.30 | Air Condition System zone 2 |  | 5d | 2024-01-25 | 2024-01-31 | 13, 30 | 0d |  |  | 13 |
| 32 | 1.31 | Floor adaptation zone 2 |  | 3d | 2024-02-01 | 2024-02-05 | 30, 31 | 0d |  |  | 30 |
| 33 | 1.32 | Installation electrical stair |  | 14d | 2024-01-25 | 2024-02-13 | 30 | 2d |  |  | 30 |
| 34 | 1.33 | Replacement of toilets zone 2 |  | 8d | 2024-02-06 | 2024-02-15 | 32 | 0d |  |  | 30 |
| 35 | 1.34 | Elevator door adaptation |  | 3d | 2024-02-16 | 2024-02-20 | 34, 32, 33 | 0d |  |  | 34 |
| 36 | 1.35 | Installation of fiber optics for WiFi zone 2 |  | 3d | 2024-02-16 | 2024-02-20 | 32FS+8d | 0d |  |  | 33 |
| 37 | 1.36 | Wall patching on floor zone 2 |  | 8d | 2024-02-21 | 2024-03-01 | 36, 35 | 0d |  |  | 36 |
| 38 | 1.37 | Painting walls on floor zone 2 |  | 5d | 2024-03-11 | 2024-03-15 | 37FS+5d | 0d |  |  | 37FC+5 días |
| 39 | 1.38 | Nurses room adaptation |  | 3d | 2024-03-18 | 2024-03-20 | 38 | 51d |  |  | 38 |
| 40 | 1.39 | Medical consultancy rooms |  | 8d | 2024-03-18 | 2024-03-27 | 38 | 0d |  |  | 38 |
| 41 | 1.40 | Pipeline system zone 3 |  | 6d | 2024-03-28 | 2024-04-04 | 40, 13 | 0d |  |  |  |
| 42 | 1.41 | Electrical system zone 3 |  | 9d | 2024-04-05 | 2024-04-17 | 13, 41 | 0d |  |  | 13 |
| 43 | 1.42 | Air Condition System zone 3 |  | 5d | 2024-04-18 | 2024-04-24 | 13, 42 | 0d |  |  | 13 |
| 44 | 1.43 | Replacement of toilets zone 3 |  | 3d | 2024-04-25 | 2024-04-29 | 43 | 0d |  |  | 42 |
| 45 | 1.44 | Elevator door adaptation |  | 2d | 2024-04-25 | 2024-04-26 | 42FS+5d | 3d |  |  | 42 |
| 46 | 1.45 | Installation of fiber optics for WiFi zone 3 |  | 2d | 2024-04-30 | 2024-05-01 | 41, 44 | 0d |  |  | 45 |
| 47 | 1.46 | Industrial kitchen installment |  | 10d | 2024-04-18 | 2024-05-01 | 41, 42 | 0d |  |  | 42 |
| 48 | 1.47 | Wall patching on floor zone 3 |  | 8d | 2024-05-02 | 2024-05-13 | 46, 45, 47 | 0d |  |  | 46 |
| 49 | 1.48 | Painting walls on floor zone 3 |  | 5d | 2024-05-21 | 2024-05-27 | 48FS+5d | 0d |  |  | 48FC+5 días |
| 50 | 1.49 | Clients room adaptation |  | 3d | 2024-05-28 | 2024-05-30 | 49 | 0d |  |  | 49 |
| 51 | 1.50 | Dining room adaptation |  | 3d | 2024-05-28 | 2024-05-30 | 49 | 0d |  |  | 49 |
| 52 | 1.51 | Control Center installment |  | 1d | 2024-05-30 | 2024-05-30 | 49FS+2d | 0d |  |  | 49 |
| 53 | 1.52 | Equipment functionality test |  | 3d | 2024-05-31 | 2024-06-04 | 28, 40, 52, 39, 50, 51 | 0d |  |  | 28;40;52 |
| 54 | 1.53 | Final test supporting document |  | 1d | 2024-06-05 | 2024-06-05 | 10, 11, 12, 53 | 0d |  |  | 53 |
| 55 | 1.54 | Operations manual |  | 1d | 2024-06-06 | 2024-06-06 | 54 | 0d |  |  | 54 |
| 56 | 1.55 | Contracts closure |  | 3d | 2024-06-07 | 2024-06-11 | 4, 55 | 0d |  |  | 28;40;52;54 |
| 57 | 1.56 | Project closing report |  | 1d | 2024-06-12 | 2024-06-12 | 56 | 0d |  |  | 56 |
| 58 | 1.57 | ACCEPTANCE Project 1 | milestone | 0d | 2024-06-12 | 2024-06-12 | 57 | 0d |  |  | 57 |
